Schedule from MS Project, 2020-04-06 to 2021-06-14, costs in $.

## Calendars

- Padrão: Mon-Fri 09:00-12:00, 13:00-18:00; Sat-Sun off.

## Resources

| Resource | Rate |
| --- | --- |
| Não atribuído | 10 |
| Cliente | 10 |
| GP externo | 200 |
| Analista 1 | 150 |
| Analista 2 | 110 |
| Analista3 | 120 |

## Schedule

| ID | WBS | Task | Duration | Start | Finish | Predecessors | Total slack | Free slack | Constraint | Resources | Work | Cost |
| --- | --- | --- | --- | --- | --- | --- | --- | --- | --- | --- | --- | --- |
| 1 | 1 | **Projeto Clinica Médica** | 12d? | 2021-05-17 09:00 | 2021-06-01 18:00 |  |  |  |  |  | 159.84h | 18,592.45 |
| 2 | 1.1 | **Prospecção** | 1.5d? | 2021-05-17 13:00 | 2021-05-18 17:00 |  |  |  |  |  | 15.2h | 2,144.85 |
| 3 | 1.1.1 | **PTEC** | 1.13d | 2021-05-17 13:00 | 2021-05-18 14:02 |  |  |  |  |  | 9.04h | 1,314.4 |
| 4 | 1.1.1.1 | Estudar dominio da Aplicação | 0.25d | 2021-05-17 13:00 | 2021-05-17 15:00 |  | 18.64d | 0d |  | Analista 1 | 2h | 300 |
| 5 | 1.1.1.2 | Reunir-se com o fornecedor de requisitos | 0.25d | 2021-05-17 15:00 | 2021-05-17 17:00 | 4 | 18.64d | 0d | start no earlier than 2020-04-07 11:00 | Analista 1 | 2h | 300 |
| 6 | 1.1.1.3 | Redigir PTEC | 0.5d | 2021-05-17 17:00 | 2021-05-18 12:00 | 5 | 18.64d | 0d | start no earlier than 2020-04-07 14:00 | Analista 1 | 4h | 600 |
| 7 | 1.1.1.4 | Revisar proposta Técnica | 0.13d | 2021-05-18 13:00 | 2021-05-18 14:02 | 6 | 18.64d |  | start no earlier than 2020-04-08 09:00 | Analista 2 | 1.04h | 114.4 |
| 8 | 1.1.2 | **Est. Prel. Tam.** | 1.13d? | 2021-05-17 13:00 | 2021-05-18 14:02 |  |  |  |  |  | 3.12h | 374.4 |
| 9 | 1.1.2.1 | Estimar tamanho do Projeto | 0.13d | 2021-05-18 13:00 | 2021-05-18 14:02 | 6 | 18.64d |  | start no earlier than 2020-04-08 09:00 | Analista 1 | 2.08h | 166.4 |
| 10 | 1.1.2.2 | revisarestimativadetamanh | 0.13d? | 2021-05-17 13:00 | 2021-05-17 14:02 |  | 19.26d |  |  | GP externo | 1.04h | 208 |
| 11 | 1.1.3 | **Est. Prel. Cronograma e Oçamento** | 0.38d | 2021-05-20 15:00 | 2021-05-21 09:02 |  |  |  |  |  | 3.04h | 456.05 |
| 12 | 1.1.3.1 | Elaborar cronograma e orçamento preliminaes | 0.25d | 2021-05-18 14:02 | 2021-05-18 16:02 | 8 | 18.26d | 0d | finish no earlier than 2020-04-08 13:00 | Analista 1 | 2h | 300.05 |
| 13 | 1.1.3.2 | Revisar cronograma e orçamento preliminaes | 0.13d | 2021-05-18 16:02 | 2021-05-18 17:04 | 12 | 18.26d |  | start no earlier than 2020-04-08 13:00 | Analista 1 | 1.04h | 156 |
| 14 | 1.2 | **Analise** | 4.25d | 2021-05-24 10:00 | 2021-05-28 12:00 |  |  |  |  |  | 34.08h | 4,190.4 |
| 15 | 1.2.1 | **Documentos de Requisito** | 2.75d | 2021-05-24 10:00 | 2021-05-26 17:00 |  |  |  |  |  | 22.08h | 2,550.4 |
| 16 | 1.2.1.1 | Renir-se com o cliente | 0.63d | 2021-05-21 09:02 | 2021-05-21 15:04 | 11 | 8.24d | 0d | start no earlier than 2020-04-08 14:00 | Analista 1 | 5.04h | 756 |
| 17 | 1.2.1.2 | Elaborar DRE | 1d | 2021-05-21 15:04 | 2021-05-24 15:04 | 16 | 8.24d | 0d | start no earlier than 2020-04-09 10:00 | Analista 1 | 8h | 1,200 |
| 18 | 1.2.1.3 | Revisar DRE | 0.63d | 2021-05-24 15:04 | 2021-05-25 11:07 | 17 | 8.24d | 0d | start no earlier than 2020-04-10 10:00 | Analista 2 | 5.04h | 554.4 |
| 19 | 1.2.1.4 | Submeter DTE para aprovação do cliente | 0.5d | 2021-05-25 11:07 | 2021-05-26 14:07 | 18 | 8.24d | 0d | start no earlier than 2020-04-10 16:00 | Cliente | 4h | 40 |
| 20 | 1.2.2 | **MRB** | 1.5d | 2021-05-31 15:00 | 2021-06-02 10:00 |  |  |  |  |  | 12h | 1,640 |
| 21 | 1.2.2.1 | Elaborar MRB | 1d | 2021-05-26 14:07 | 2021-05-27 14:07 | 19 | 8.24d | 0d | start no earlier than 2020-04-13 11:00 | Analista 1 | 8h | 1,200 |
| 22 | 1.2.2.2 | Revisar MRB | 0.5d | 2021-05-27 14:07 | 2021-05-28 09:07 | 21 | 8.24d | 0d | start no earlier than 2020-04-14 11:00 | Analista 2 | 4h | 440 |
| 23 | 1.3 | **Projeto** | 6.13d | 2021-05-18 13:00 | 2021-05-26 14:02 |  |  |  |  |  | 9.12h | 1,224.8 |
| 24 | 1.3.1 | Implementar RFS06 | 0.25d | 2021-05-17 17:00 | 2021-05-18 10:00 | 59 | 19.02d |  | start no earlier than 2020-04-07 14:00 | Analista3 | 2h | 240 |

| ID | WBS | Task | Duration | Start | Finish | Predecessors | Total slack | Free slack | Constraint | Resources | Work | Cost |
| --- | --- | --- | --- | --- | --- | --- | --- | --- | --- | --- | --- | --- |
| 25 | 1.3.2 | **Diagrama de Classes** | 0.5d | 2021-06-03 10:00 | 2021-06-03 15:00 |  |  |  |  |  | 4.08h | 570.4 |
| 26 | 1.3.2.1 | Elaborar diagrama de classes | 0.25d | 2021-05-28 09:07 | 2021-05-28 11:07 | 22 | 8.24d | 0d | start no earlier than 2020-04-14 16:00 | Analista 1 | 2h | 300 |
| 27 | 1.3.2.2 | Revisar diagrama de classe | 0.13d | 2021-05-28 11:07 | 2021-05-28 13:09 | 26 | 8.24d | 0d | start no earlier than 2020-04-15 09:00 | Analista 2 | 1.04h | 114.4 |
| 28 | 1.3.2.3 | Atualizar MRB | 0.13d | 2021-05-28 13:09 | 2021-05-28 14:12 | 27 | 8.24d | 0d | start no earlier than 2020-04-15 10:00 | Analista 1 | 1.04h | 156 |
| 29 | 1.3.3 | **Modelo de entidade de relacionamento** | 0.38d | 2021-06-07 13:00 | 2021-06-07 16:02 |  |  |  |  |  | 3.04h | 414.4 |
| 30 | 1.3.3.1 | Elaborar MER | 0.25d | 2021-05-28 14:12 | 2021-05-28 16:12 | 28 | 8.24d | 0d | start no earlier than 2020-04-15 11:00 | Analista 1 | 2h | 300 |
| 31 | 1.3.3.2 | Revisar MER | 0.13d | 2021-05-28 16:12 | 2021-05-28 17:14 | 30 | 8.24d | 0d | start no earlier than 2020-04-15 14:00 | Analista 2 | 1.04h | 114.4 |
| 32 | 1.4 | **Implementação** | 12d | 2021-05-17 13:00 | 2021-06-02 12:00 |  |  |  |  |  | 95.44h | 10,252.4 |
| 33 | 1.4.1 | **Release 01** | 10.13d | 2021-05-17 13:00 | 2021-05-31 14:02 |  |  |  |  |  | 56.32h | 6,758 |
| 34 | 1.4.1.1 | **Implementação** | 2d | 2021-06-08 15:00 | 2021-06-10 15:00 |  |  |  |  |  | 16h | 1,919.6 |
| 35 | 1.4.1.1.1 | Implementar RFS01 | 0.5d | 2021-05-28 17:14 | 2021-05-31 13:14 | 31 | 8.24d | 0d | start no earlier than 2020-04-15 15:00 | Analista3 | 4h | 480 |
| 36 | 1.4.1.1.2 | Implementar RFS02 | 0.5d | 2021-05-31 13:14 | 2021-05-31 17:14 | 35 | 8.24d | 0d | start no earlier than 2020-04-16 10:00 | Analista3 | 4h | 479.8 |
| 37 | 1.4.1.1.3 | Implementar RFS03 | 0.5d | 2021-05-31 17:14 | 2021-06-01 13:14 | 36 | 8.24d | 0d | start no earlier than 2020-04-16 15:00 | Analista3 | 4h | 480 |
| 38 | 1.4.1.1.4 | Implementar RFS04 | 0.5d | 2021-06-01 13:14 | 2021-06-01 17:14 | 37 | 8.24d |  | start no earlier than 2020-04-17 10:00 | Analista3 | 4h | 479.8 |
| 39 | 1.4.1.2 | **Teste** | 9.63d | 2021-05-18 13:00 | 2021-06-01 09:02 |  |  |  |  |  | 16.16h | 1,939.2 |
| 40 | 1.4.1.2.1 | Testar RFC01 | 0.38d | 2021-06-10 15:00 | 2021-06-11 09:02 | 34 | 0d |  | start no earlier than 2020-04-17 15:00 | Analista3 | 3.04h | 364.8 |
| 41 | 1.4.1.2.2 | Testar RFC02 | 0.38d | 2021-06-11 09:02 | 2021-06-11 13:04 | 40 | 0d |  | finish no earlier than 2020-04-20 13:00 | Analista3 | 3.04h | 364.8 |
| 42 | 1.4.1.2.3 | Testar RFC03 | 0.38d | 2021-06-11 13:04 | 2021-06-11 16:07 | 41 | 0d |  | start no earlier than 2020-04-20 13:00 | Analista3 | 3.04h | 364.8 |
| 43 | 1.4.1.2.4 | Testar RFC04 | 0.38d | 2021-06-11 16:07 | 2021-06-14 10:09 | 42 | 0d |  | start no earlier than 2020-04-20 16:00 | Analista3 | 3.04h | 364.8 |
| 44 | 1.4.1.2.6 | Implementar RFS04 | 0.5d | 2021-05-17 17:00 | 2021-05-18 12:00 | 57 | 18.77d |  | start no earlier than 2020-04-07 14:00 | Analista3 | 4h | 480 |
| 45 | 1.4.1.3 | **Implementação** | 1.5d | 2021-05-17 13:00 | 2021-05-18 17:00 |  |  |  |  |  | 12h | 1,440 |
| 46 | 1.4.1.3.1 | Implementar RFS01 | 0.5d | 2021-05-17 13:00 | 2021-05-17 17:00 |  | 18.27d | 0d |  | Analista3 | 4h | 480 |
| 47 | 1.4.1.3.2 | Implementar RFS02 | 0.5d | 2021-05-17 17:00 | 2021-05-18 12:00 | 46 | 18.27d | 0d | start no earlier than 2020-04-07 14:00 | Analista3 | 4h | 480 |
| 48 | 1.4.1.3.3 | Implementar RFS03 | 0.5d | 2021-05-18 13:00 | 2021-05-18 17:00 | 47 | 18.27d |  | start no earlier than 2020-04-08 09:00 | Analista3 | 4h | 480 |

| ID | WBS | Task | Duration | Start | Finish | Predecessors | Total slack | Free slack | Constraint | Resources | Work | Cost |
| --- | --- | --- | --- | --- | --- | --- | --- | --- | --- | --- | --- | --- |
| 49 | 1.4.1.4 | **Teste** | 1.5d | 2021-05-17 13:00 | 2021-05-18 17:00 |  |  |  |  |  | 12.16h | 1,459.2 |
| 50 | 1.4.1.4.1 | Testar RFC01 | 0.38d | 2020-04-06 17:57 | 2020-04-07 13:00 |  | 307.63d | 0d | finish no earlier than 2020-04-07 13:00 | Analista3 | 3.04h | 364.8 |
| 51 | 1.4.1.4.2 | Testar RFC02 | 0.38d | 2020-04-07 13:00 | 2020-04-07 16:02 | 50 | 307.63d | 0d | start no earlier than 2020-04-07 13:00 | Analista3 | 3.04h | 364.8 |
| 52 | 1.4.1.4.3 | Testar RFC03 | 0.38d | 2020-04-07 16:02 | 2020-04-08 10:04 | 51 | 307.63d | 0d | start no earlier than 2020-04-07 16:00 | Analista3 | 3.04h | 364.8 |
| 53 | 1.4.1.4.4 | Testar RFC04 | 0.38d | 2020-04-08 10:04 | 2020-04-08 14:07 | 52 | 307.63d |  | start no earlier than 2020-04-08 10:00 | Analista3 | 3.04h | 364.8 |
| 54 | 1.4.2 | **Release 03** | 12d | 2021-05-17 13:00 | 2021-06-02 12:00 |  |  |  |  |  | 10h |  |
| 55 | 1.4.2.1 | Implementação | 12d | 2021-05-17 13:00 | 2021-06-02 12:00 |  | 7.77d |  |  |  | 10h |  |
| 56 | 1.4.3 | **Release 02** | 1.63d | 2021-05-17 13:00 | 2021-05-19 09:02 |  |  |  |  |  | 29.12h | 3,494.4 |
| 57 | 1.4.3.1 | Implementar RFS03 | 0.5d | 2021-05-17 13:00 | 2021-05-17 17:00 |  | 18.77d | 0d |  | Analista3 | 4h | 480 |
| 58 | 1.4.3.2 | Implementar RFS01 | 0.5d | 2021-05-17 13:00 | 2021-05-17 17:00 |  | 19.27d |  |  | Analista3 | 4h | 480 |
| 59 | 1.4.3.3 | Implementar RFS05 | 0.5d | 2021-05-17 13:00 | 2021-05-17 17:00 |  | 19.02d | 0d |  | Analista3 | 4h | 480 |
| 60 | 1.4.3.5 | Implementar RFS09 | 0.5d | 2021-05-17 13:00 | 2021-05-17 17:00 |  | 19.27d |  |  | Analista3 | 4h | 480 |
| 61 | 1.4.3.9 | **Teste** | 1.63d | 2021-05-17 13:00 | 2021-05-19 09:02 |  |  |  |  |  | 13.12h | 1,574.4 |
| 62 | 1.4.3.9.1 | Testar RFC01 | 0.5d | 2021-05-17 13:00 | 2021-05-17 17:00 |  | 18.13d | 0d |  | Analista3 | 4h | 480 |
| 63 | 1.4.3.9.2 | Testar RFC02 | 0.38d | 2021-05-17 17:00 | 2021-05-18 11:02 | 62 | 18.13d | 0d | start no earlier than 2020-04-07 14:00 | Analista3 | 3.04h | 364.8 |
| 64 | 1.4.3.9.3 | Testar RFC03 | 0.38d | 2021-05-18 11:02 | 2021-05-18 15:04 | 63 | 18.13d | 0d | start no earlier than 2020-04-07 17:00 | Analista3 | 3.04h | 364.8 |
| 65 | 1.4.3.9.4 | Testar RFC04 | 0.38d | 2021-05-18 15:04 | 2021-05-19 09:07 | 64 | 18.13d |  | start no earlier than 2020-04-08 11:00 | Analista3 | 3.04h | 364.8 |
| 66 | 1.5 | **Monitoramento e controle** | 0.5d | 2021-05-17 13:00 | 2021-05-17 17:00 |  |  |  |  |  | 6h | 780 |
| 67 | 1.5.1 | **Acompanhar projeto** | 0.5d | 2021-05-17 13:00 | 2021-05-17 17:00 |  |  |  |  | Analista 1 | 6h | 780 |
| 68 | 1.5.1.1 | Implementar RFS07 | 0.5d | 2021-05-17 13:00 | 2021-05-17 17:00 |  | 19.27d |  |  | Analista3 | 4h | 480 |
